# Gantt & PERT copy

Schedule from MS Project, 2016-03-01 to 2016-07-11, costs in $.

## Calendars

- Standard: Mon-Fri 08:00-12:00, 13:00-17:00; Sat-Sun off.

## Resources

| Resource | Rate | Cost per use |
| --- | --- | --- |
| Project Manager | 160 | 44 |
| Business Analyst 1 | 90 | 31 |
| Business Analyst 2 | 90 | 31 |
| Developer 1 | 120 | 33 |
| Developer 2 | 120 | 33 |
| Developer 3 | 120 | 33 |
| Developer 4 | 120 | 33 |
| Tester 1 | 80 | 26 |
| Tester 2 | 80 | 26 |
| Tester 3 | 80 | 26 |
| Tester 4 | 80 | 26 |
| Infrastructure Support Engineer | 130 | 42 |
| Change Control Analyst | 95 | 30 |
| Production Support Analyst | 90 | 29 |

## Schedule

| ID | WBS | Task | Type | Duration | Start | Finish | Predecessors | Resources | Work | Cost |
| --- | --- | --- | --- | --- | --- | --- | --- | --- | --- | --- |
| 1 | 1 | **Project Initiation** |  | 16d | 2016-03-01 | 2016-03-22 |  |  | 296h | 34,594 |
| 2 | 1.1 | **Project evaluation** |  | 3d | 2016-03-01 | 2016-03-03 |  |  | 72h | 7,630 |
| 3 | 1.1.1 | Current system concepts and understanding | manual | 2d | 2016-03-01 | 2016-03-02 |  | Business Analyst 1; Developer 1 | 32h | 3,424 |
| 4 | 1.1.2 | Project feasibility study | manual | 2d | 2016-03-01 | 2016-03-02 |  | Business Analyst 2; Developer 2 | 32h | 3,424 |
| 5 | 1.1.3 | Project recommendations | manual | 1d | 2016-03-03 | 2016-03-03 |  | Business Analyst 1; Business Analyst 2 | 8h | 782 |
| 6 | 1.2 | **Project charter preparation** |  | 5d | 2016-03-04 | 2016-03-10 | 2 |  | 72h | 9,868 |
| 7 | 1.2.1 | Define scope, time, cost | manual | 2d | 2016-03-04 | 2016-03-07 |  | Business Analyst 1; Developer 1 | 32h | 3,424 |
| 8 | 1.2.2 | Identify summary milestones | manual | 2d | 2016-03-04 | 2016-03-07 |  |  |  |  |
| 9 | 1.2.3 | Assign high level roles | manual | 1d | 2016-03-07 | 2016-03-07 |  |  |  |  |
| 10 | 1.2.4 | Prepare high level budget | manual | 1d | 2016-03-08 | 2016-03-08 | 7, 9 |  |  |  |
| 11 | 1.2.5 | Identify high level control strategies | manual | 1d | 2016-03-08 | 2016-03-08 |  |  |  |  |
| 12 | 1.2.6 | Define project manager authority level | manual | 1d | 2016-03-09 | 2016-03-09 | 11 |  |  |  |
| 13 | 1.2.7 | Gain approval for project charter | manual | 1d | 2016-03-10 | 2016-03-10 | 7, 8, 9, 10, 11, 12 |  |  |  |
| 14 | 1.2.8 | Project Management Task 1 - Project Charter Preparation | manual | 5d | 2016-03-04 | 2016-03-10 |  | Project Manager | 40h | 6,444 |
| 15 | 1.3 | **Preliminary project scope** |  | 3d | 2016-03-11 | 2016-03-15 | 6 |  | 24h | 3,884 |
| 16 | 1.3.1 | Define preliminary scope statement | manual | 2d | 2016-03-11 | 2016-03-14 |  |  |  |  |
| 17 | 1.3.2 | Gain approval for preliminary scope | manual | 1d | 2016-03-15 | 2016-03-15 | 16 |  |  |  |
| 18 | 1.3.3 | Project Management Task 2 - Preliminary Scope | manual | 3d | 2016-03-11 | 2016-03-15 |  | Project Manager | 24h | 3,884 |
| 19 | 1.4 | **Detailed Requirement Gathering** |  | 5d | 2016-03-16 | 2016-03-22 | 15 |  | 128h | 13,212 |
| 20 | 1.4.1 | Requirement gathering interviews with users | manual | 3d | 2016-03-16 | 2016-03-18 |  | Business Analyst 1; Business Analyst 2; Developer 3; Developer 4 | 96h | 10,208 |
| 21 | 1.4.2 | Consolidated requirement document | manual | 1d | 2016-03-21 | 2016-03-21 | 20 | Business Analyst 1; Business Analyst 2 | 16h | 1,502 |
| 22 | 1.4.3 | Approval of requirements | manual | 1d | 2016-03-22 | 2016-03-22 | 21 | Business Analyst 1; Business Analyst 2 | 16h | 1,502 |
| 23 | 2 | **Project Planning** |  | 17d | 2016-03-22 | 2016-04-13 | 1 |  | 392h | 48,804 |
| 24 | 2.1 | Project kick off meeting | manual | 1d | 2016-03-22 | 2016-03-22 |  | Business Analyst 1; Business Analyst 2; Developer 1; Developer 2; Developer 3; Developer 4; Tester 1; Tester 2; Tester 3; Tester 4 | 64h | 6,698 |
| 25 | 2.2 | Project Management Task 3 - Kickoff Meeting | manual | 1d | 2016-03-22 | 2016-03-22 |  | Project Manager | 8h | 1,324 |

| ID | WBS | Task | Type | Duration | Start | Finish | Predecessors | Resources | Work | Cost |
| --- | --- | --- | --- | --- | --- | --- | --- | --- | --- | --- |
| 26 | 2.3 | **Prepare project plan** |  | 5d | 2016-03-23 | 2016-03-29 | 24 |  | 40h | 6,444 |
| 27 | 2.3.1 | Define work breakdown structure | manual | 1d | 2016-03-23 | 2016-03-23 |  |  |  |  |
| 28 | 2.3.2 | Estimate and prepare project schedule | manual | 1d | 2016-03-24 | 2016-03-24 | 27 |  |  |  |
| 29 | 2.3.3 | Prepare project budget | manual | 2d | 2016-03-25 | 2016-03-28 | 28 |  |  |  |
| 30 | 2.3.4 | Develop resource allocation plan | manual | 1d | 2016-03-29 | 2016-03-29 | 29 |  |  |  |
| 31 | 2.3.5 | Project Management Task 4 - Prepare Project Plan | manual | 5d | 2016-03-23 | 2016-03-29 |  | Project Manager | 40h | 6,444 |
| 32 | 2.4 | **High level design** |  | 5d | 2016-03-29 | 2016-04-04 |  |  | 184h | 21,346 |
| 33 | 2.4.1 | Prepare high level design of web portal | manual | 3d | 2016-03-29 | 2016-03-31 |  | Developer 1; Developer 2; Developer 3; Business Analyst 1 | 96h | 10,930 |
| 34 | 2.4.2 | Develop high level design of New EDI mappings | manual | 1d | 2016-03-31 | 2016-03-31 |  | Developer 4; Business Analyst 2 | 16h | 1,744 |
| 35 | 2.4.3 | High level design of compliance link test application | manual | 1d | 2016-04-01 | 2016-04-01 | 33, 34 | Developer 1; Developer 2; Developer 3; Developer 4; Business Analyst 1; Business Analyst 2; Tester 1 | 8h | 860 |
| 36 | 2.4.4 | High level architecture of integration of ERP and warehouse systems | manual | 2d | 2016-04-01 | 2016-04-04 | 33, 34 | Developer 1; Developer 2; Developer 3; Developer 4 | 64h | 7,812 |
| 37 | 2.5 | **Quality management plan** |  | 3d | 2016-04-04 | 2016-04-06 | 26 |  | 56h | 6,548 |
| 38 | 2.5.1 | Define quality standards for project | manual | 1d | 2016-04-04 | 2016-04-04 |  | Tester 1; Tester 2 | 16h | 1,332 |
| 39 | 2.5.2 | Quality metrics | manual | 1d | 2016-04-05 | 2016-04-05 | 38 | Tester 1 | 8h | 666 |
| 40 | 2.5.3 | Quality checklist | manual | 1d | 2016-04-05 | 2016-04-05 | 38 | Tester 2 | 8h | 666 |
| 41 | 2.5.4 | Gain approval for quality management plan | manual | 1d | 2016-04-06 | 2016-04-06 | 40 |  |  |  |
| 42 | 2.5.5 | Project Management Task 5 - Quality Management Plan | manual | 3d | 2016-04-04 | 2016-04-06 |  | Project Manager | 24h | 3,884 |
| 43 | 2.6 | **Risk planning** |  | 3d | 2016-04-07 | 2016-04-11 | 32 |  |  |  |
| 44 | 2.6.1 | Prepare risk register | manual | 1d | 2016-04-07 | 2016-04-07 |  |  |  |  |
| 45 | 2.6.2 | Risk priority list | manual | 1d | 2016-04-08 | 2016-04-08 | 44 |  |  |  |
| 46 | 2.6.3 | Risk control procedures | manual | 2d | 2016-04-08 | 2016-04-11 |  |  |  |  |
| 47 | 2.7 | Develop communication plan | manual | 1d | 2016-04-12 | 2016-04-12 | 24, 26, 32, 37, 43 |  |  |  |
| 48 | 2.8 | Finalize project plan and gain approvals | manual | 1d | 2016-04-13 | 2016-04-13 | 47 |  |  |  |
| 49 | 2.9 | Project Management Task 6 - Risk Planning and Approvals | manual | 5d | 2016-04-07 | 2016-04-13 |  | Project Manager | 40h | 6,444 |

| ID | WBS | Task | Type | Duration | Start | Finish | Predecessors | Resources | Work | Cost |
| --- | --- | --- | --- | --- | --- | --- | --- | --- | --- | --- |
| 50 | 3 | **Project Execution** |  | 54d | 2016-04-14 | 2016-06-28 | 23 |  | 1344h | 147,290 |
| 51 | 3.1 | **Detailed design** |  | 11d | 2016-04-14 | 2016-04-28 |  |  | 352h | 39,204 |
| 52 | 3.1.1 | Detailed design of web portal | manual | 6d | 2016-04-14 | 2016-04-21 |  | Developer 1; Developer 2; Business Analyst 1 | 144h | 15,937 |
| 53 | 3.1.2 | Low level design of new EDI mappings | manual | 6d | 2016-04-14 | 2016-04-21 |  | Developer 3; Developer 4; Business Analyst 2 | 96h | 10,177 |
| 54 | 3.1.3 | Low level design of compliance link test application | manual | 2d | 2016-04-22 | 2016-04-25 | 52, 53 | Developer 1; Developer 2; Developer 3; Developer 4; Tester 1 | 16h | 1,438 |
| 55 | 3.1.4 | Low level architecture of integration of ERP and warehouse systems | manual | 3d | 2016-04-26 | 2016-04-28 | 54 | Developer 1; Developer 2; Developer 3; Developer 4 | 96h | 11,652 |
| 56 | 3.2 | **Hardware and software procurement** |  | 6d | 2016-04-28 | 2016-05-05 |  |  | 48h | 6,366 |
| 57 | 3.2.1 | Hardware acquirement & installation | manual | 3d | 2016-04-28 | 2016-05-02 |  | Infrastructure Support Engineer | 24h | 3,162 |
| 58 | 3.2.2 | Software installation | manual | 1d | 2016-05-03 | 2016-05-03 | 51 | Infrastructure Support Engineer | 8h | 1,082 |
| 59 | 3.2.3 | Prepare development environment | manual | 2d | 2016-05-04 | 2016-05-05 |  | Infrastructure Support Engineer | 16h | 2,122 |
| 60 | 3.3 | **Implementation** |  | 14d | 2016-05-05 | 2016-05-24 | 56 |  | 384h | 46,740 |
| 61 | 3.3.1 | **Develop supplier web portal** |  | 8d | 2016-05-05 | 2016-05-16 |  |  | 208h | 25,257 |
| 62 | 3.3.1.1 | Create incoming shipment tracking functionality | manual | 3d | 2016-05-05 | 2016-05-09 |  | Developer 1; Developer 2; Developer 3; Developer 4 | 96h | 11,652 |
| 63 | 3.3.1.2 | Create outgoing shipment tracking functionality | manual | 3d | 2016-05-10 | 2016-05-12 |  | Developer 1; Developer 2; Developer 3; Developer 4 | 96h | 11,652 |
| 64 | 3.3.1.3 | Develop screens for supplier login | manual | 2d | 2016-05-13 | 2016-05-16 |  | Developer 1 | 16h | 1,953 |
| 65 | 3.3.2 | **Develop new EDI mappings** |  | 2d | 2016-05-16 | 2016-05-17 |  |  | 48h | 5,859 |
| 66 | 3.3.2.1 | Tracking numbers and Pallet ID’s | manual | 2d | 2016-05-16 | 2016-05-17 |  | Developer 2 | 16h | 1,953 |
| 67 | 3.3.2.2 | Estimated ship dates and PO text to suppliers | manual | 2d | 2016-05-16 | 2016-05-17 |  | Developer 3 | 16h | 1,953 |
| 68 | 3.3.2.3 | Lot (batch) numbers and Expiration dates | manual | 2d | 2016-05-16 | 2016-05-17 |  | Developer 4 | 16h | 1,953 |
| 69 | 3.3.3 | Develop of a compliance link application for testing supplier maps. | manual | 3d | 2016-05-18 | 2016-05-20 | 65 | Developer 1 | 24h | 2,913 |
| 70 | 3.3.4 | **Directing feed into ERP and Warehousing systems** |  | 3d | 2016-05-18 | 2016-05-20 | 62, 65 |  | 48h | 5,826 |
| 71 | 3.3.4.1 | Map ERP output data to data warehouse tables | manual | 3d | 2016-05-18 | 2016-05-20 |  | Developer 2 | 24h | 2,913 |
| 72 | 3.3.4.2 | Integrate ERP system with warehouse | manual | 3d | 2016-05-18 | 2016-05-20 |  | Developer 3 | 24h | 2,913 |
| 73 | 3.3.5 | Develop a non-conforming queue for order processing | manual | 3d | 2016-05-18 | 2016-05-20 | 62 | Developer 4 | 24h | 2,913 |
| 74 | 3.3.6 | Enhancement of receiving process | manual | 2d | 2016-05-23 | 2016-05-24 | 62, 65 | Developer 1; Developer 2 | 32h | 3,906 |
| 75 | 3.3.7 | Enhancement of put away process | milestone, manual | 0d | 2016-05-23 | 2016-05-24 | 62, 65 | Developer 3; Developer 4 |  | 66 |

| ID | WBS | Task | Type | Duration | Start | Finish | Predecessors | Constraint | Resources | Work | Cost |
| --- | --- | --- | --- | --- | --- | --- | --- | --- | --- | --- | --- |
| 76 | 3.4 | **Change control** |  | 6d | 2016-05-24 | 2016-05-31 | 60 |  |  | 128h | 17,104 |
| 77 | 3.4.1 | Evaluate the impact of change | manual | 1d | 2016-05-24 | 2016-05-24 |  |  | Developer 3; Developer 4 | 16h | 1,986 |
| 78 | 3.4.2 | Identify various options for change | manual | 1d | 2016-05-25 | 2016-05-25 | 77 |  | Developer 3; Developer 4 | 16h | 1,986 |
| 79 | 3.4.3 | Gain approval for change request | manual | 1d | 2016-05-26 | 2016-05-26 | 78 |  | Business Analyst 1; Business Analyst 2 | 16h | 1,502 |
| 80 | 3.4.4 | Implement change | manual | 2d | 2016-05-27 | 2016-05-30 | 79 |  | Developer 3; Developer 4 | 32h | 3,906 |
| 81 | 3.4.5 | Adjust and communicate project plan, documents, and baseline | manual | 1d | 2016-05-31 | 2016-05-31 | 80 |  |  |  |  |
| 82 | 3.4.6 | Project Management Task 7 - Change Control | manual | 6d | 2016-05-24 | 2016-05-31 |  |  | Project Manager | 48h | 7,724 |
| 83 | 3.5 | **Testing** |  | 10d | 2016-05-31 | 2016-06-13 |  |  |  | 176h | 14,366 |
| 84 | 3.5.1 | **Unit testing** |  | 9d | 2016-05-31 | 2016-06-10 |  |  |  | 176h | 14,366 |
| 85 | 3.5.1.1 | Test supplier web portal | manual | 4d | 2016-05-31 | 2016-06-03 |  |  | Tester 1 | 32h | 2,586 |
| 86 | 3.5.1.2 | Test EDI mapping enhancements | manual | 1d | 2016-06-02 | 2016-06-02 |  |  | Tester 2 | 8h | 666 |
| 87 | 3.5.1.3 | Test compliance link application for testing supplier maps | manual | 2d | 2016-05-31 | 2016-06-01 |  |  | Tester 3; Tester 4 | 32h | 2,612 |
| 88 | 3.5.1.4 | Test warehouse is getting feed from ERP system | manual | 2d | 2016-06-06 | 2016-06-07 |  |  | Tester 1 | 16h | 1,306 |
| 89 | 3.5.1.5 | Test non-conforming queue | manual | 1d | 2016-06-07 | 2016-06-07 |  |  | Tester 3 | 8h | 666 |
| 90 | 3.5.1.6 | Test receiving and put away process | manual | 3d | 2016-06-06 | 2016-06-08 |  |  | Tester 2 | 24h | 1,946 |
| 91 | 3.5.1.7 | Defect resolution and retesting | manual | 2d | 2016-06-08 | 2016-06-09 | 85, 86, 87, 88, 89 |  | Tester 1; Tester 3; Tester 4 | 48h | 3,918 |
| 92 | 3.5.1.8 | Sign off for testing | manual | 1d | 2016-06-10 | 2016-06-10 | 91 |  | Tester 1 | 8h | 666 |
| 93 | 3.6 | **Integration testing** |  | 5d | 2016-06-10 | 2016-06-16 | 84 |  |  | 40h | 3,252 |
| 94 | 3.6.1 | Integrated components testing for each module | manual | 3d | 2016-06-10 | 2016-06-14 |  |  | Tester 4 | 24h | 1,946 |
| 95 | 3.6.2 | Integrated modules testing | manual | 2d | 2016-06-15 | 2016-06-16 | 94 |  | Tester 2 | 16h | 1,306 |
| 96 | 3.7 | **System testing** |  | 7d | 2016-06-16 | 2016-06-24 | 93 |  |  | 104h | 8,476 |
| 97 | 3.7.1 | Test whole system for all the requirements | manual | 4d | 2016-06-15 | 2016-06-20 |  | start no earlier than 2016-06-15 | Tester 1; Tester 3; Tester 4 | 80h | 6,478 |
| 98 | 3.7.2 | Functional testing | manual | 1d | 2016-06-24 | 2016-06-24 | 97 |  | Tester 1 | 8h | 666 |
| 99 | 3.7.3 | Stress testing | manual | 1d | 2016-06-24 | 2016-06-24 | 97 |  | Tester 2; Tester 3 | 16h | 1,332 |

| ID | WBS | Task | Type | Duration | Start | Finish | Predecessors | Resources | Work | Cost |
| --- | --- | --- | --- | --- | --- | --- | --- | --- | --- | --- |
| 100 | 3.8 | **User acceptance testing** |  | 2d | 2016-06-24 | 2016-06-27 | 96 |  | 80h | 9,118 |
| 101 | 3.8.1 | Defect resolution | manual | 2d | 2016-06-24 | 2016-06-27 |  | Developer 1; Developer 2; Developer 3; Developer 4 | 64h | 7,812 |
| 102 | 3.8.2 | Retesting in UAT environment | manual | 2d | 2016-06-24 | 2016-06-27 |  | Tester 4 | 16h | 1,306 |
| 103 | 3.9 | Sign off for all the complete testing | manual | 1d | 2016-06-28 | 2016-06-28 | 100 | Tester 1; Tester 2; Tester 3; Tester 4 | 32h | 2,664 |
| 104 | 4 | **Project Deployment** |  | 7d | 2016-06-28 | 2016-07-06 | 50 |  | 136h | 14,005 |
| 105 | 4.1 | **Deployment preparation** |  | 4d | 2016-06-28 | 2016-07-01 |  |  | 72h | 8,426 |
| 106 | 4.1.1 | Create documents for migration plan | manual | 2d | 2016-06-28 | 2016-06-29 |  | Change Control Analyst | 16h | 1,550 |
| 107 | 4.1.2 | Steps to follow for deployment | manual | 1d | 2016-06-30 | 2016-06-30 | 106 | Change Control Analyst | 8h | 790 |
| 108 | 4.1.3 | Checklist | manual | 1d | 2016-06-30 | 2016-06-30 | 106 | Project Manager | 8h | 1,324 |
| 109 | 4.1.4 | Code freeze | manual | 1d | 2016-07-01 | 2016-07-01 | 108, 107 | Change Control Analyst | 8h | 790 |
| 110 | 4.1.5 | Code check-in | manual | 1d | 2016-07-01 | 2016-07-01 | 108, 107 | Developer 1; Developer 2; Developer 3; Developer 4 | 32h | 3,972 |
| 111 | 4.2 | **Deployment to production** |  | 4d | 2016-07-01 | 2016-07-06 |  |  | 64h | 5,579 |
| 112 | 4.2.1 | Deploy code to production | manual | 1d | 2016-07-01 | 2016-07-01 |  | Production Support Analyst | 8h | 749 |
| 113 | 4.2.2 | Validate and verify the changes | manual | 2d | 2016-07-04 | 2016-07-05 | 112 | Production Support Analyst | 16h | 1,469 |
| 114 | 4.2.3 | Test system in production environment | manual | 2d | 2016-07-04 | 2016-07-05 | 112 | Tester 1; Tester 2 | 32h | 2,612 |
| 115 | 4.2.4 | Announce availability of new system | manual | 1d | 2016-07-06 | 2016-07-06 | 114, 113 | Production Support Analyst | 8h | 749 |
| 116 | 5 | **Project Closure** |  | 4d | 2016-07-06 | 2016-07-11 | 104 |  | 32h | 5,164 |
| 117 | 5.1 | Administrative closure processes | manual | 1d | 2016-07-06 | 2016-07-06 |  |  |  |  |
| 118 | 5.2 | Organizational procedures for asset updates | manual | 1d | 2016-07-06 | 2016-07-06 |  |  |  |  |
| 119 | 5.3 | Final services and results documentation | manual | 1d | 2016-07-06 | 2016-07-06 |  |  |  |  |
| 120 | 5.4 | Gain formal deliverable acceptance | manual | 1d | 2016-07-07 | 2016-07-07 | 117, 118, 119 |  |  |  |
| 121 | 5.5 | Document lessons learned | manual | 1d | 2016-07-08 | 2016-07-08 |  |  |  |  |
| 122 | 5.6 | Archive files and documents | manual | 1d | 2016-07-08 | 2016-07-08 |  |  |  |  |
| 123 | 5.7 | Closure of contract | manual | 1d | 2016-07-11 | 2016-07-11 | 121, 122 |  |  |  |
| 124 | 5.8 | Project Management Task 8 - Project Closure | manual | 4d | 2016-07-06 | 2016-07-11 |  | Project Manager | 32h | 5,164 |
